# Apptracsem

Schedule from MS Project, 2019-05-03 to 2019-08-06, costs in $.
HP

## Calendars

- Estándar: Mon-Fri 09:00-13:00, 15:00-19:00; Sat-Sun off.

## Resources

| Resource | Rate | Cost per use |
| --- | --- | --- |
| Lider Joana Joselin Domínguez Rodríguez | 185 |  |
| Analista Irving Cruz Cordoba | 147 |  |
| Analista Eduardo Manuel Pérez García | 151 |  |
| Programador Alberto de Jesus león Moreno | 147.12 |  |
| Asegurador de la calidad Base de Datos Joana Joselin Domínguez Rodríguez | 110 |  |
| Tester Irving Cruz Cordoba |  |  |
| Administrador de la configuración Eduardo Manuel Pérez García | 110 |  |
| Programador Backend Alberto de Jesus león Moreno |  |  |
| Laptop Acer |  | 50 |
| Laptop HP 15BA113CI |  | 37.5 |
| Laptop HP Pavilion 6G |  | 37.5 |
| Laptop HP RTL8821CE |  | 50 |
| Servicio de CFE |  | 1.41 |
| Servicio de agua |  | 1.61 |
| Servicio de internet |  | 1.53 |
| Servicio de limpieza |  | 6.04 |
| Impresora HP |  | 12.5 |
| Tinta de impresora |  | 1.45 |
| Hojas blancas tamaño carta |  | 1.5 |
| Cliente |  |  |

## Schedule

| ID | WBS | Task | Type | Duration | Start | Finish | Predecessors | Total slack | Resources | Work | Cost |
| --- | --- | --- | --- | --- | --- | --- | --- | --- | --- | --- | --- |
| 1 | 1 | **Agrotrasem** |  | 68d | 2019-05-03 | 2019-08-06 |  |  |  | 3952h | 420,838.88 |
| 2 | 1.1 | **Gestión de los requerimientos** |  | 13d | 2019-05-03 | 2019-05-21 |  |  |  | 304h | 41,899.76 |
| 3 | 1.1.1 | Análisis del problema | manual | 1d | 2019-05-03 | 2019-05-03 |  |  | Analista Irving Cruz Cordoba; Hojas blancas tamaño carta; Laptop HP 15BA113CI; Lider Joana Joselin Domínguez Rodríguez; Servicio de CFE; Servicio de internet; Analista Eduardo Manuel Pérez García; Cliente | 32h | 3,905.94 |
| 4 | 1.1.2 | Recopilar información | manual | 2d | 2019-05-03 | 2019-05-06 |  |  | Analista Irving Cruz Cordoba; Analista Eduardo Manuel Pérez García; Hojas blancas tamaño carta; Laptop HP Pavilion 6G; Lider Joana Joselin Domínguez Rodríguez; Servicio de agua; Servicio de CFE; Servicio de internet; Cliente | 64h | 7,771.55 |
| 5 | 1.1.3 | Identificación de requerimientos | manual | 2d | 2019-05-07 | 2019-05-08 | 4 |  | Analista Irving Cruz Cordoba; Analista Eduardo Manuel Pérez García; Hojas blancas tamaño carta; Laptop HP Pavilion 6G; Lider Joana Joselin Domínguez Rodríguez; Servicio de agua; Servicio de CFE; Servicio de internet | 48h | 7,771.55 |
| 6 | 1.1.4 | Identificación de restricciones del sistema a desarrollar | manual | 2d | 2019-05-09 | 2019-05-10 | 5 |  | Analista Irving Cruz Cordoba; Analista Eduardo Manuel Pérez García; Programador Alberto de Jesus león Moreno; Programador Backend Alberto de Jesus león Moreno; Laptop HP RTL8821CE; Servicio de agua; Servicio de CFE; Servicio de internet | 64h | 7,176.47 |
| 7 | 1.1.5 | Análisis de los requerimientos | manual | 2d | 2019-05-09 | 2019-05-10 | 5 |  | Servicio de agua; Servicio de CFE; Servicio de internet; Analista Irving Cruz Cordoba; Laptop HP 15BA113CI | 16h | 2,394.05 |
| 8 | 1.1.6 | Representación de los requerimientos | manual | 3d | 2019-05-13 | 2019-05-15 | 7 |  | Servicio de agua; Servicio de CFE; Servicio de internet; Analista Eduardo Manuel Pérez García; Laptop HP RTL8821CE | 24h | 3,678.55 |
| 9 | 1.1.7 | Comunicación de los requerimientos | manual | 1d | 2019-05-16 | 2019-05-16 | 8 |  | Servicio de agua; Servicio de CFE; Servicio de internet; Analista Irving Cruz Cordoba; Analista Eduardo Manuel Pérez García; Laptop HP 15BA113CI; Laptop HP RTL8821CE; Lider Joana Joselin Domínguez Rodríguez | 24h | 3,956.05 |
| 10 | 1.1.8 | Validación de requerimientos | manual | 1d | 2019-05-17 | 2019-05-17 | 9 |  | Servicio de agua; Servicio de CFE; Servicio de internet; Analista Eduardo Manuel Pérez García; Lider Joana Joselin Domínguez Rodríguez; Laptop HP 15BA113CI | 16h | 2,730.05 |
| 11 | 1.1.9 | Generación del SRS | manual | 2d | 2019-05-20 | 2019-05-21 | 10 |  | Servicio de agua; Servicio de CFE; Servicio de internet; Analista Eduardo Manuel Pérez García; Laptop HP 15BA113CI | 16h | 2,458.05 |
| 12 | 1.1.10 | Firma del SRS | milestone | 0d | 2019-05-21 | 2019-05-21 | 11 | 0d | Servicio de agua; Servicio de CFE; Servicio de internet; Lider Joana Joselin Domínguez Rodríguez; Cliente; Hojas blancas tamaño carta; Laptop HP RTL8821CE; Tinta de impresora |  | 57.5 |
| 13 | 1.2 | **Diseño** |  | 20d | 2019-05-22 | 2019-06-18 | 2 | 0d |  | 496h | 51,235.48 |
| 14 | 1.2.1 | **Diseño funcional** |  | 9d | 2019-05-22 | 2019-06-03 |  |  |  | 288h | 26,959.53 |
| 15 | 1.2.1.1 | Definir el funcionamiento del producto | manual | 2d | 2019-05-22 | 2019-05-23 |  |  | Servicio de agua; Servicio de CFE; Servicio de internet; Analista Irving Cruz Cordoba; Lider Joana Joselin Domínguez Rodríguez; Laptop HP 15BA113CI | 32h | 5,354.05 |
| 16 | 1.2.1.2 | Definir las pantallas del sitio web | manual | 1d | 2019-05-22 | 2019-05-22 |  |  | Servicio de agua; Servicio de CFE; Servicio de internet; Analista Irving Cruz Cordoba; Administrador de la configuración Eduardo Manuel Pérez García; Laptop Acer; Programador Backend Alberto de Jesus león Moreno; Programador Alberto de Jesus león Moreno | 32h | 3,287.51 |
| 17 | 1.2.1.3 | Definir los servicios y funcionalidades | manual | 2d | 2019-05-24 | 2019-05-27 | 16, 15 |  | Servicio de agua; Servicio de CFE; Servicio de internet; Administrador de la configuración Eduardo Manuel Pérez García; Laptop Acer; Laptop HP 15BA113CI; Programador Backend Alberto de Jesus león Moreno; Programador Alberto de Jesus león Moreno | 48h | 4,205.97 |
| 18 | 1.2.1.4 | Generar mapa de navegación | manual | 1d | 2019-05-23 | 2019-05-23 | 16 |  | Servicio de agua; Servicio de CFE; Servicio de internet; Analista Irving Cruz Cordoba; Analista Eduardo Manuel Pérez García; Administrador de la configuración Eduardo Manuel Pérez García | 24h | 3,268.55 |
| 19 | 1.2.1.5 | Crear el prototipo de alto nivel | manual | 5d | 2019-05-24 | 2019-05-30 | 18 |  | Servicio de agua; Servicio de CFE; Servicio de internet; Laptop Acer; Programador Backend Alberto de Jesus león Moreno; Programador Alberto de Jesus león Moreno; Tester Irving Cruz Cordoba | 120h | 5,939.35 |
| 20 | 1.2.1.6 | Validación de las pantallas | manual | 2d | 2019-05-31 | 2019-06-03 | 19 |  | Servicio de agua; Servicio de CFE; Servicio de internet; Administrador de la configuración Eduardo Manuel Pérez García; Laptop HP 15BA113CI; Laptop HP RTL8821CE; Lider Joana Joselin Domínguez Rodríguez | 32h | 4,812.05 |
| 21 | 1.2.1.7 | Firma de Documento de Validacion | milestone | 0d | 2019-06-03 | 2019-06-03 | 20 | 0d | Servicio de agua; Servicio de CFE; Servicio de internet; Administrador de la configuración Eduardo Manuel Pérez García; Laptop HP 15BA113CI; Laptop HP RTL8821CE; Lider Joana Joselin Domínguez Rodríguez; Cliente |  | 92.05 |
| 22 | 1.2.2 | **Diseño técnico** |  | 11d | 2019-06-03 | 2019-06-18 | 20 | 0d |  | 208h | 24,275.95 |
| 23 | 1.2.2.1 | Diseño de diagramas de clases | manual | 2d | 2019-06-04 | 2019-06-05 | 17 |  | Servicio de agua; Servicio de CFE; Servicio de internet; Analista Irving Cruz Cordoba | 16h | 2,356.55 |
| 24 | 1.2.2.2 | Generar el diagrama E-R | manual | 2d | 2019-06-04 | 2019-06-05 | 17 |  | Servicio de agua; Servicio de CFE; Servicio de internet; Asegurador de la calidad Base de Datos Joana Joselin Domínguez Rodríguez | 16h | 1,764.55 |
| 25 | 1.2.2.3 | Validar el diagrama E-R | manual | 1d | 2019-06-06 | 2019-06-06 | 24 |  | Servicio de agua; Servicio de CFE; Servicio de internet; Asegurador de la calidad Base de Datos Joana Joselin Domínguez Rodríguez | 8h | 884.55 |
| 26 | 1.2.2.4 | Transformar al diagrama relacional | manual | 2d | 2019-06-07 | 2019-06-10 | 25 |  | Servicio de agua; Servicio de CFE; Servicio de internet; Asegurador de la calidad Base de Datos Joana Joselin Domínguez Rodríguez | 16h | 1,764.55 |
| 27 | 1.2.2.5 | Codificar las pantallas | manual | 6d | 2019-06-11 | 2019-06-18 | 26 |  | Servicio de agua; Servicio de CFE; Servicio de internet; Administrador de la configuración Eduardo Manuel Pérez García; Laptop HP 15BA113CI | 48h | 5,322.05 |
| 28 | 1.2.2.6 | Validar entradas de datos | manual | 2d | 2019-06-04 | 2019-06-05 |  |  | Servicio de agua; Servicio de CFE; Servicio de internet; Administrador de la configuración Eduardo Manuel Pérez García; Laptop HP 15BA113CI; Programador Backend Alberto de Jesus león Moreno | 32h | 1,802.05 |
| 29 | 1.2.2.7 | Generar documento de especificación de diseño funcional y técnico | manual | 2d | 2019-06-04 | 2019-06-05 |  |  | Servicio de agua; Servicio de CFE; Servicio de internet; Analista Irving Cruz Cordoba; Analista Eduardo Manuel Pérez García; Lider Joana Joselin Domínguez Rodríguez | 48h | 7,732.55 |
| 30 | 1.2.2.8 | Firma del SDS | milestone | 0d | 2019-06-03 | 2019-06-03 |  | 11d | Servicio de agua; Servicio de CFE; Servicio de internet |  | 4.55 |
| 31 | 1.2.2.9 | Programar funcionalidades de la base de datos | manual | 3d | 2019-06-06 | 2019-06-10 | 28 |  | Servicio de agua; Servicio de CFE; Servicio de internet; Asegurador de la calidad Base de Datos Joana Joselin Domínguez Rodríguez | 24h | 2,644.55 |

| ID | WBS | Task | Type | Duration | Start | Finish | Predecessors | Total slack | Constraint | Resources | Work | Cost |
| --- | --- | --- | --- | --- | --- | --- | --- | --- | --- | --- | --- | --- |
| 32 | 1.3 | **Codificación** |  | 20d | 2019-06-19 | 2019-07-16 |  |  |  |  | 2800h | 291,041.63 |
| 33 | 1.3.1 | Programar funcionalidades de la base de datos | manual | 4d | 2019-06-19 | 2019-06-24 | 13 |  |  | Servicio de agua; Servicio de CFE; Servicio de internet; Asegurador de la calidad Base de Datos Joana Joselin Domínguez Rodríguez; Administrador de la configuración Eduardo Manuel Pérez García | 64h | 7,044.55 |
| 34 | 1.3.2 | Programar el módulo de Productos | manual | 10d | 2019-06-25 | 2019-07-08 | 33 |  |  | Servicio de agua; Laptop Acer; Analista Irving Cruz Cordoba; Administrador de la configuración Eduardo Manuel Pérez García; Programador Backend Alberto de Jesus león Moreno; Programador Alberto de Jesus león Moreno; Servicio de CFE; Servicio de internet | 320h | 32,384.15 |
| 35 | 1.3.3 | Pruebas unitarias | manual | 4d | 2019-07-09 | 2019-07-12 | 34 |  |  | Analista Irving Cruz Cordoba; Administrador de la configuración Eduardo Manuel Pérez García; Lider Joana Joselin Domínguez Rodríguez; Tester Irving Cruz Cordoba; Servicio de agua; Servicio de CFE; Servicio de internet | 128h | 14,148.55 |
| 36 | 1.3.4 | Programar el módulo Refacciones | manual | 10d | 2019-06-25 | 2019-07-08 | 33 |  |  | Servicio de agua; Servicio de CFE; Servicio de internet; Analista Irving Cruz Cordoba; Administrador de la configuración Eduardo Manuel Pérez García; Programador Backend Alberto de Jesus león Moreno; Programador Alberto de Jesus león Moreno; Laptop Acer | 320h | 32,384.15 |
| 37 | 1.3.5 | Pruebas unitarias | manual | 4d | 2019-07-09 | 2019-07-12 | 36 |  |  | Analista Irving Cruz Cordoba; Administrador de la configuración Eduardo Manuel Pérez García; Lider Joana Joselin Domínguez Rodríguez; Tester Irving Cruz Cordoba; Servicio de agua; Servicio de CFE; Servicio de internet | 128h | 14,148.55 |
| 38 | 1.3.6 | Programar el módulo Insumos agricolas | manual | 10d | 2019-06-25 | 2019-07-08 | 33 |  |  | Servicio de agua; Servicio de CFE; Servicio de internet; Analista Irving Cruz Cordoba; Administrador de la configuración Eduardo Manuel Pérez García; Programador Backend Alberto de Jesus león Moreno; Programador Alberto de Jesus león Moreno; Laptop Acer | 320h | 32,384.15 |
| 39 | 1.3.7 | Pruebas unitarias | manual | 4d | 2019-07-09 | 2019-07-12 | 38 |  |  | Analista Irving Cruz Cordoba; Administrador de la configuración Eduardo Manuel Pérez García; Lider Joana Joselin Domínguez Rodríguez; Tester Irving Cruz Cordoba; Servicio de agua; Servicio de CFE; Servicio de internet | 128h | 14,148.55 |
| 40 | 1.3.8 | Programar el módulo servicios mecanicos | manual | 10d | 2019-06-25 | 2019-07-08 | 33 |  |  | Servicio de agua; Servicio de CFE; Servicio de internet; Analista Irving Cruz Cordoba; Administrador de la configuración Eduardo Manuel Pérez García; Programador Backend Alberto de Jesus león Moreno; Programador Alberto de Jesus león Moreno; Laptop Acer | 320h | 32,384.15 |
| 41 | 1.3.9 | Pruebas unitarias | manual | 4d | 2019-07-09 | 2019-07-12 | 40 |  |  | Servicio de CFE; Servicio de internet; Analista Irving Cruz Cordoba; Administrador de la configuración Eduardo Manuel Pérez García; Lider Joana Joselin Domínguez Rodríguez; Tester Irving Cruz Cordoba; Servicio de agua | 128h | 14,148.55 |
| 42 | 1.3.10 | Programar el módulo Insumos agricolas | manual | 10d | 2019-06-25 | 2019-07-08 | 33 |  |  | Servicio de agua; Servicio de CFE; Servicio de internet; Analista Irving Cruz Cordoba; Administrador de la configuración Eduardo Manuel Pérez García; Programador Backend Alberto de Jesus león Moreno; Programador Alberto de Jesus león Moreno; Laptop Acer | 320h | 32,384.15 |
| 43 | 1.3.11 | Pruebas unitarias | manual | 4d | 2019-07-09 | 2019-07-12 | 42 |  |  | Servicio de CFE; Servicio de internet; Analista Irving Cruz Cordoba; Administrador de la configuración Eduardo Manuel Pérez García; Lider Joana Joselin Domínguez Rodríguez; Tester Irving Cruz Cordoba; Servicio de agua | 128h | 14,148.55 |
| 44 | 1.3.12 | Programar el módulo usurios | manual | 10d | 2019-06-25 | 2019-07-08 | 33 |  |  | Servicio de agua; Servicio de CFE; Servicio de internet; Analista Irving Cruz Cordoba; Administrador de la configuración Eduardo Manuel Pérez García; Programador Backend Alberto de Jesus león Moreno; Programador Alberto de Jesus león Moreno; Laptop Acer | 320h | 32,384.15 |
| 45 | 1.3.13 | Pruebas unitarias | manual | 4d | 2019-07-09 | 2019-07-12 | 44 |  |  | Servicio de CFE; Servicio de internet; Analista Irving Cruz Cordoba; Administrador de la configuración Eduardo Manuel Pérez García; Lider Joana Joselin Domínguez Rodríguez; Tester Irving Cruz Cordoba; Servicio de agua | 128h | 14,148.55 |
| 46 | 1.3.14 | Validación diseño y funcionalidad | manual | 2d | 2019-07-15 | 2019-07-16 | 45 |  |  | Cliente; Servicio de CFE; Servicio de internet; Administrador de la configuración Eduardo Manuel Pérez García; Laptop HP Pavilion 6G; Lider Joana Joselin Domínguez Rodríguez | 48h | 4,760.44 |
| 47 | 1.3.15 | Firma de Documento de Validacion | milestone | 0d | 2019-07-16 | 2019-07-16 | 46 | 0d |  | Cliente; Servicio de CFE; Servicio de internet; Administrador de la configuración Eduardo Manuel Pérez García; Laptop HP Pavilion 6G; Lider Joana Joselin Domínguez Rodríguez |  | 40.44 |
| 48 | 1.4 | **Pruebas** |  | 7d | 2019-07-17 | 2019-07-25 |  |  |  |  | 112h | 6,164.55 |
| 49 | 1.4.1 | Pruebas de integración de software | manual | 7d | 2019-07-17 | 2019-07-25 | 32 |  |  | Servicio de agua; Servicio de CFE; Servicio de internet; Administrador de la configuración Eduardo Manuel Pérez García; Tester Irving Cruz Cordoba | 112h | 6,164.55 |
| 50 | 1.4.2 | Firma de Documento de Validacion | milestone | 0d | 2019-07-25 | 2019-07-25 | 49 | 0d |  |  |  |  |
| 51 | 1.5 | **Implementación** |  | 8d | 2019-07-26 | 2019-08-06 |  |  |  |  | 160h | 18,910.94 |
| 52 | 1.5.1 | Implementar software en la empresa | manual | 4d | 2019-07-26 | 2019-07-31 | 48 |  |  | Servicio de agua; Servicio de CFE; Servicio de internet; Administrador de la configuración Eduardo Manuel Pérez García; Programador Backend Alberto de Jesus león Moreno; Programador Alberto de Jesus león Moreno | 96h | 8,232.39 |
| 53 | 1.5.2 | Capacitación presencial del usuario | manual | 4d | 2019-08-01 | 2019-08-06 | 52 |  |  | Servicio de agua; Servicio de CFE; Servicio de internet; Analista Irving Cruz Cordoba; Laptop Acer; Lider Joana Joselin Domínguez Rodríguez | 64h | 10,678.55 |
| 54 | 1.5.3 | Firma de Documento de Validacion | milestone | 0d | 2019-08-06 | 2019-08-06 | 53 | 0d |  |  |  |  |
| 55 | 1.6 | **Reuniones** |  | 68d | 2019-05-03 | 2019-08-06 |  |  |  |  | 80h | 11,586.52 |
| 56 | 1.6.1 | Reuniones 1 | manual | 2h | 2019-05-03 | 2019-05-03 |  |  | start no earlier than 2019-05-03 | Analista Irving Cruz Cordoba; Cliente; Analista Eduardo Manuel Pérez García; Laptop HP RTL8821CE; Lider Joana Joselin Domínguez Rodríguez; Servicio de agua; Servicio de CFE; Servicio de internet; Servicio de limpieza; Tinta de impresora | 8h | 1,028.04 |
| 57 | 1.6.2 | Reuniones 2 | manual | 2h | 2019-05-10 | 2019-05-10 |  |  | start no earlier than 2019-05-10 | Analista Irving Cruz Cordoba; Analista Eduardo Manuel Pérez García; Laptop HP RTL8821CE; Lider Joana Joselin Domínguez Rodríguez; Administrador de la configuración Eduardo Manuel Pérez García; Asegurador de la calidad Base de Datos Joana Joselin Domínguez Rodríguez | 10h | 1,456 |
| 58 | 1.6.3 | Reuniones 3 | manual | 2h | 2019-05-17 | 2019-05-17 |  |  | start no earlier than 2019-05-17 | Analista Irving Cruz Cordoba; Cliente; Analista Eduardo Manuel Pérez García; Laptop HP RTL8821CE; Lider Joana Joselin Domínguez Rodríguez; Servicio de agua; Servicio de CFE; Servicio de internet; Servicio de limpieza; Tinta de impresora | 8h | 1,028.04 |
| 59 | 1.6.4 | Reuniones 4 | manual | 2h | 2019-05-24 | 2019-05-24 |  |  | start no earlier than 2019-05-24 | Analista Eduardo Manuel Pérez García; Laptop HP RTL8821CE; Lider Joana Joselin Domínguez Rodríguez; Servicio de agua; Servicio de CFE; Servicio de internet; Servicio de limpieza; Tinta de impresora | 4h | 734.04 |
| 60 | 1.6.5 | Reuniones 5 | manual | 2h | 2019-05-31 | 2019-05-31 |  |  | start no earlier than 2019-05-31 | Cliente; Analista Eduardo Manuel Pérez García; Laptop HP RTL8821CE; Lider Joana Joselin Domínguez Rodríguez; Servicio de agua; Servicio de CFE; Servicio de internet; Servicio de limpieza; Tinta de impresora | 6h | 734.04 |
| 61 | 1.6.6 | Reuniones 6 | manual | 2h | 2019-06-07 | 2019-06-07 |  |  | start no earlier than 2019-06-07 | Analista Eduardo Manuel Pérez García; Laptop HP RTL8821CE; Lider Joana Joselin Domínguez Rodríguez; Servicio de agua; Servicio de CFE; Servicio de internet; Servicio de limpieza; Tinta de impresora | 4h | 734.04 |
| 62 | 1.6.7 | Reuniones 7 | manual | 2h | 2019-06-14 | 2019-06-14 |  |  | start no earlier than 2019-06-14 | Cliente; Analista Eduardo Manuel Pérez García; Laptop HP RTL8821CE; Lider Joana Joselin Domínguez Rodríguez; Servicio de agua; Servicio de CFE; Servicio de internet; Servicio de limpieza; Tinta de impresora | 6h | 734.04 |
| 63 | 1.6.8 | Reuniones 8 | manual | 2h | 2019-06-21 | 2019-06-21 |  |  | start no earlier than 2019-06-21 | Analista Eduardo Manuel Pérez García; Laptop HP RTL8821CE; Lider Joana Joselin Domínguez Rodríguez; Servicio de agua; Servicio de CFE; Servicio de internet; Servicio de limpieza; Tinta de impresora | 4h | 734.04 |
| 64 | 1.6.9 | Reuniones 9 | manual | 2h | 2019-06-28 | 2019-06-28 |  |  | start no earlier than 2019-06-28 | Cliente; Analista Eduardo Manuel Pérez García; Laptop HP RTL8821CE; Lider Joana Joselin Domínguez Rodríguez; Servicio de agua; Servicio de CFE; Servicio de internet; Servicio de limpieza; Tinta de impresora | 6h | 734.04 |
| 65 | 1.6.10 | Reuniones 10 | manual | 2h | 2019-07-05 | 2019-07-05 |  |  | start no earlier than 2019-07-05 | Analista Eduardo Manuel Pérez García; Laptop HP RTL8821CE; Lider Joana Joselin Domínguez Rodríguez; Servicio de agua; Servicio de CFE; Servicio de internet; Servicio de limpieza; Tinta de impresora | 4h | 734.04 |
| 66 | 1.6.11 | Reuniones 11 | manual | 2h | 2019-07-12 | 2019-07-12 |  |  | start no earlier than 2019-07-12 | Cliente; Analista Eduardo Manuel Pérez García; Laptop HP RTL8821CE; Lider Joana Joselin Domínguez Rodríguez; Servicio de agua; Servicio de CFE; Servicio de internet; Servicio de limpieza; Tinta de impresora | 6h | 734.04 |
| 67 | 1.6.12 | Reuniones 12 | manual | 2h | 2019-07-19 | 2019-07-19 |  |  | start no earlier than 2019-07-19 | Analista Eduardo Manuel Pérez García; Laptop HP RTL8821CE; Lider Joana Joselin Domínguez Rodríguez; Servicio de agua; Servicio de CFE; Servicio de internet; Servicio de limpieza; Tinta de impresora | 4h | 734.04 |
| 68 | 1.6.13 | Reuniones 13 | manual | 2h | 2019-07-26 | 2019-07-26 |  |  | start no earlier than 2019-07-26 | Cliente; Analista Eduardo Manuel Pérez García; Laptop HP RTL8821CE; Lider Joana Joselin Domínguez Rodríguez; Servicio de agua; Servicio de CFE; Servicio de internet; Servicio de limpieza; Tinta de impresora | 6h | 734.04 |
| 69 | 1.6.14 | Reuniones 14 | manual | 2h | 2019-08-02 | 2019-08-02 |  |  | start no earlier than 2019-08-02 | Analista Eduardo Manuel Pérez García; Laptop HP RTL8821CE; Lider Joana Joselin Domínguez Rodríguez; Servicio de agua; Servicio de CFE; Servicio de internet; Servicio de limpieza; Tinta de impresora | 4h | 734.04 |
